# Assignment7Baseline(group)

How a schedule from MS Project changed from version to version. A marks actual dates.

## Version 1 (data date 2024-12-11, saved 2024-11-08, file assignment8CustomFields.mpp)

| ID | WBS | Task | Duration | Start | Finish | Predecessors | Complete | Total float |
| --- | --- | --- | --- | --- | --- | --- | --- | --- |
| 1 | 1 | **Research** | 21d | 2024-10-31 A | 2024-11-28 A |  | 100% |  |
| 2 |  | Determine project scope | 5d | 2024-10-31 A | 2024-11-06 A |  | 100% |  |
| 3 |  | Conduct needs analysis | 3d | 2024-11-07 A | 2024-11-11 A | 2 | 100% |  |
| 4 |  | Draft preliminary software specifications | 4d | 2024-11-12 A | 2024-11-15 A | 3 | 100% |  |
| 5 |  | Define preliminary resources | 2d | 2024-11-18 A | 2024-11-19 A | 4 | 100% |  |
| 6 |  | Conduct market research on available thin clients | 4d | 2024-11-20 A | 2024-11-25 A | 5 | 100% |  |
| 7 |  | Analyze existing infrastructure for compatibility | 3d | 2024-11-26 A | 2024-11-28 A | 6 | 100% |  |
| 8 | 2 | **Planning** | 19.25d | 2024-11-29 A | 2024-12-26 A |  | 100% |  |
| 9 |  | Develop preliminary budget | 5d | 2024-11-29 A | 2024-12-05 A | 7 | 100% |  |
| 10 |  | Develop delivery timeline | 3d | 2024-12-06 A | 2024-12-10 A | 9 | 100% |  |
| 11 |  | Review software specifications/budget with team | 2.5d | 2024-12-11 A | 2024-12-17 A | 10 | 100% |  |
| 12 |  | Incorporate feedback on software specifications | 2d | 2024-12-13 A | 2024-12-18 A | 11 | 100% |  |
| 13 |  | Obtain approvals to proceed | 3d | 2024-12-17 A | 2024-12-19 A | 12 | 100% |  |
| 14 |  | Create risk management plan | 1d | 2024-12-20 A | 2024-12-25 A | 13 | 100% |  |
| 15 |  | Develop change management plan | 3d | 2024-12-23 A | 2024-12-26 A | 14 | 100% |  |
| 16 | 3 | **Purchasing** | 34.5d | 2024-12-20 A | 2025-02-06 A |  | 100% |  |
| 17 |  | Secure project sponsorship | 2d | 2024-12-20 A | 2024-12-27 A | 13 | 100% |  |
| 18 |  | Secure core resources | 4d | 2024-12-24 A | 2025-01-15 A | 17 | 100% |  |
| 19 |  | Secure required resources | 3.5d | 2024-12-30 A | 2025-01-16 A | 18 | 100% |  |
| 20 |  | Obtain quotes from vendors | 3d | 2025-01-02 A | 2025-01-17 A | 19 | 100% |  |
| 21 |  | Evaluate vendors and select suppliers | 4d | 2025-01-07 A | 2025-01-28 A | 20 | 100% |  |
| 22 |  | Procure hardware | 5d | 2025-01-13 A | 2025-02-06 A | 21 | 100% |  |
| 23 | 4 | **Installation and Configuration** | 105.5d | 2025-02-11 | 2025-07-08 |  |  | 0d |
| 24 |  | Develop code | 5d | 2025-02-11 | 2025-03-04 | 22 |  | 0d |
| 25 |  | Install/deploy software | 5d | 2025-03-05 | 2025-03-26 | 24 |  | 120d |
| 26 |  | Configure required systems | 4d | 2025-03-27 | 2025-04-15 | 25 |  | 120d |
| 27 |  | Set up user accounts and permissions | 3d | 2025-04-16 | 2025-04-29 | 26 |  | 120d |
| 28 |  | Perform initial network configuration for thin clients | 4d | 2025-04-30 | 2025-05-15 | 27 |  | 120d |
| 29 |  | Document configuration settings | 4d | 2025-05-20 | 2025-07-08 | 28 |  | 120d |
| 30 | 5 | **Testing** | 105.5d | 2025-03-05 | 2025-07-30 |  |  | 0d |
| 31 |  | Develop unit test plans using product specifications | 4d | 2025-03-05 | 2025-03-20 | 24 |  | 0d |
| 32 |  | Unit Testing | 5d | 2025-03-25 | 2025-04-15 | 31 |  | 0d |
| 33 |  | Test component modules to product specifications | 5d | 2025-04-16 | 2025-05-07 | 32 |  | 0d |
| 34 |  | Integration Testing | 7d | 2025-05-08 | 2025-06-10 | 33 |  | 0d |
| 35 |  | Deliverable * Integration testing complete | 2d | 2025-06-11 | 2025-06-18 | 34 |  | 0d |
| 36 |  | Conduct performance testing on thin clients | 6d | 2025-06-19 | 2025-07-16 | 35 |  | 0d |
| 37 |  | Record and analyze test results | 3d | 2025-07-17 | 2025-07-30 | 36 |  | 0d |
| 38 | 6 | **Training** | 244.5d | 2024-10-31 | 2025-10-08 |  |  | 0d |
| 39 | 6.1 | **Location 1 Training** | 31.5d | 2025-08-26 | 2025-10-08 |  |  | 0d |
| 40 |  | Develop training specifications for end users | 3d | 2025-08-26 | 2025-09-04 | 37 |  | 0d |
| 41 |  | Develop training materials | 4d | 2025-09-09 | 2025-09-24 | 40 |  | 0d |
| 42 |  | Conduct training usability study | 3d | 2025-09-25 | 2025-10-08 | 41 |  | 0d |
| 43 | 6.2 | **Location 2 Training** | 210.5d | 2024-10-31 | 2025-08-21 |  |  | 34d |
| 44 |  | Identify training delivery methodology | 2d | 2025-07-31 | 2025-08-07 | 37 |  | 34d |
| 45 |  | Finalize training materials | 3d | 2025-08-12 | 2025-08-21 | 44 |  | 32d |
| 46 |  | Training materials complete | 1d | 2024-10-31 | 2024-11-05 |  |  | 241d |
| 47 | 7 | **Cybersecurity** | 284.5d | 2024-11-20 | 2025-12-23 |  |  | 0d |
| 48 |  | Identify modular/tiered design parameters | 3d | 2025-10-09 | 2025-10-22 | 38 |  | 0d |
| 49 |  | Review Help documentation | 4d | 2025-10-23 | 2025-11-11 | 48 |  | 0d |
| 50 |  | Develop software delivery mechanism | 5d | 2025-11-12 | 2025-12-03 | 49 |  | 0d |
| 51 |  | Implement access controls for thin client environment | 4d | 2025-12-04 | 2025-12-23 | 50 |  | 0d |
| 52 |  | Conduct security audit for thin client configuration | 3d | 2024-11-20 | 2024-12-10 |  |  | 270d |

## Version 2 (data date 2024-12-11, saved 2024-11-15, file Assignment9 (1) (2).mpp)

Last finish 2025-12-23 → 2025-10-22 (-62d). Complete tasks 19 → 35.

Added:

| ID | Task | Duration | Start | Finish | Predecessors | Resources |
| --- | --- | --- | --- | --- | --- | --- |
| 1 | Project Start | 0d | 2024-10-31 A | 2024-10-31 A |  |  |
| 39 | Installation Complete | 0d | 2025-07-16 A | 2025-07-16 A | 22, 29, 37 |  |
| 41 | Prepare training manuals | 3d | 2025-07-17 A | 2025-07-30 A | 39 | Trainer |
| 42 | Training at Location 1 | 10d | 2025-07-30 | 2025-08-13 | 41 | Trainer [110%]; Network Admin [110%] |
| 43 | Training at location 2 | 1.8d | 2025-07-31 | 2025-08-07 | 41 | Trainer [110%]; Network Admin |
| 44 | Training Complete | 0d | 2025-08-13 | 2025-08-13 | 42, 43 |  |
| 51 | Project Completed | 0d | 2025-10-22 | 2025-10-22 | 50, 39 |  |

Removed: 39 Location 1 Training; 40 Develop training specifications for end users; 41 Develop training materials; 42 Conduct training usability study; 43 Location 2 Training; 44 Identify training delivery methodology; 45 Finalize training materials; 46 Training materials complete

Changed:

| ID | Task | Start | Finish | Duration | Complete | Total float | Predecessors | Other |
| --- | --- | --- | --- | --- | --- | --- | --- | --- |
| 7 | Conduct market research on available thin clients |  |  |  |  |  |  | resources It Technitian; Tester → It Technitian [300%]; Tester [110%] |
| 13 | Incorporate feedback on software specifications |  |  | 2d → 3.5d |  |  |  | resources It Technitian; Network Admin → It Technitian [300%]; Network Admin [300%] |
| 24 | **Installation and Configuration** | 2025-02-11 A | 2025-07-08 A |  | 0% → 100% | 0d → none |  |  |
| 25 | Develop code | 2025-02-11 A | 2025-03-04 A |  | 0% → 100% | 0d → none |  |  |
| 26 | Install/deploy software | 2025-03-05 A | 2025-03-26 A |  | 0% → 100% | 120d → none |  |  |
| 27 | Configure required systems | 2025-03-27 A | 2025-04-15 A |  | 0% → 100% | 120d → none |  |  |
| 28 | Set up user accounts and permissions | 2025-04-16 A | 2025-04-29 A |  | 0% → 100% | 120d → none |  | resources Helpdesk; Network Admin → Helpdesk [110%]; Network Admin |
| 29 | Perform initial network configuration for thin clients | 2025-04-30 A | 2025-05-15 A |  | 0% → 100% | 120d → none |  |  |
| 30 | Document configuration settings | 2025-05-20 A | 2025-07-08 A |  | 0% → 100% | 120d → none |  |  |
| 31 | **Testing** | 2025-03-05 A | 2025-07-30 A |  | 0% → 100% | 0d → none |  |  |
| 32 | Develop unit test plans using product specifications | 2025-03-05 A | 2025-03-20 → 2025-07-15 A (+117d) | 4d → 9.5d | 0% → 100% | 0d → none | 25 → 28 |  |
| 33 | Unit Testing | 2025-03-25 A | 2025-04-15 A |  | 0% → 100% | 0d → none |  |  |
| 34 | Test component modules to product specifications | 2025-04-16 A | 2025-05-07 A |  | 0% → 100% | 0d → none |  |  |
| 35 | Integration Testing | 2025-05-08 A | 2025-06-10 A |  | 0% → 100% | 0d → none |  |  |
| 36 | Deliverable * Integration testing complete | 2025-06-11 A | 2025-06-18 A |  | 0% → 100% | 0d → none |  |  |
| 37 | Conduct performance testing on thin clients | 2025-06-19 A | 2025-07-16 A |  | 0% → 100% | 0d → none |  |  |
| 38 | Record and analyze test results | 2025-07-17 A | 2025-07-30 A |  | 0% → 100% | 0d → none |  |  |
| 40 | **Training** | 2024-10-31 → 2025-07-17 A (+259d) | 2025-10-08 → 2025-08-13 (-56d) | 244.5d → 19.5d | 0% → 20% | 0d → 0.5d |  |  |
| 45 | **Cybersecurity** | 2024-11-20 → 2025-08-14 (+267d) | 2025-12-23 → 2025-10-22 (-62d) | 284.5d → 49.5d |  |  |  |  |
| 46 | Identify modular/tiered design parameters | 2025-10-09 → 2025-08-14 (-56d) | 2025-10-22 → 2025-08-27 (-56d) |  |  |  |  |  |
| 47 | Review Help documentation | 2025-10-23 → 2025-08-28 (-56d) | 2025-11-11 → 2025-09-16 (-56d) |  |  |  |  |  |
| 48 | Develop software delivery mechanism | 2025-11-12 → 2025-09-17 (-56d) | 2025-12-03 → 2025-10-08 (-56d) |  |  |  |  |  |
| 49 | Implement access controls for thin client environment | 2025-12-04 → 2025-10-09 (-56d) | 2025-12-23 → 2025-10-15 (-69d) | 4d → 1.33d |  | 0d → 5.17d |  | resources It Technitian; Network Admin → It Technitian [300%]; Network Admin [300%] |
| 50 | Conduct security audit for thin client configuration | 2024-11-20 → 2025-10-09 (+323d) | 2024-12-10 → 2025-10-22 (+316d) |  |  | 270d → 0d | none → 47, 48 |  |

## Version 3 (data date 2024-12-11, saved 2024-11-22, file assignment_final (1).mpp)

Last finish 2025-10-22 → 2025-04-25 (-180d). Complete tasks 35 → 6.

Added:

| ID | Task | Duration | Start | Finish | Predecessors | Resources |
| --- | --- | --- | --- | --- | --- | --- |
| 39 | **Location 1 Training** | 10d | 2025-03-06 | 2025-03-19 |  |  |
| 40 | Develop training specifications for end users | 3d | 2025-03-06 | 2025-03-10 | 37 | Trainer |
| 41 | Develop training materials | 4d | 2025-03-11 | 2025-03-14 | 40 | Trainer |
| 42 | Conduct training usability study | 3d | 2025-03-17 | 2025-03-19 | 41 | Trainer |
| 43 | **Location 2 Training** | 113d | 2024-10-31 | 2025-04-07 |  |  |
| 44 | Identify training delivery methodology | 2d | 2025-03-20 | 2025-03-21 | 37 | Trainer |
| 45 | Finalize training materials | 3d | 2025-04-03 | 2025-04-07 | 44 | Trainer |
| 46 | Training materials complete | 1d | 2024-10-31 | 2024-10-31 |  | Trainer |

Removed: 1 Project Start; 39 Installation Complete; 41 Prepare training manuals; 42 Training at Location 1; 43 Training at location 2; 44 Training Complete; 51 Project Completed

Changed:

| ID | Task | Start | Finish | Duration | Complete | Total float | Predecessors | Other |
| --- | --- | --- | --- | --- | --- | --- | --- | --- |
| 1 | **Research** |  |  |  |  |  |  | baseline start none → 2024-10-31; baseline finish none → 2024-11-28 |
| 2 | Determine project scope |  |  |  |  |  |  | baseline start none → 2024-10-31; baseline finish none → 2024-11-06 |
| 3 | Conduct needs analysis |  |  |  |  |  |  | baseline start none → 2024-11-07; baseline finish none → 2024-11-11 |
| 4 | Draft preliminary software specifications |  |  |  |  |  |  | baseline start none → 2024-11-12; baseline finish none → 2024-11-15 |
| 5 | Define preliminary resources |  |  |  |  |  |  | baseline start none → 2024-11-18; baseline finish none → 2024-11-19 |
| 6 | Conduct market research on available thin clients |  |  |  |  |  |  | resources It Technitian [300%]; Tester [110%] → It Technitian; Tester; baseline start none → 2024-11-20; baseline finish none → 2024-11-25 |
| 7 | Analyze existing infrastructure for compatibility |  |  |  |  |  |  | baseline start none → 2024-11-26; baseline finish none → 2024-11-28 |
| 8 | **Planning** |  | 2024-12-26 A → 2024-12-26 |  | 100% → 54% | none → 86.75d |  | baseline start none → 2024-11-29; baseline finish none → 2024-12-25 |
| 9 | Develop preliminary budget |  | 2024-12-05 A → 2024-12-05 |  | 100% → 25% | none → 1.5d |  | baseline start none → 2024-11-29; baseline finish none → 2024-12-05 |
| 10 | Develop delivery timeline |  | 2024-12-10 A → 2024-12-10 |  | 100% → 50% | none → 1.5d |  | baseline start none → 2024-12-06; baseline finish none → 2024-12-10 |
| 11 | Review software specifications/budget with team |  | 2024-12-17 A → 2024-12-12 (-5d) | 2.5d → 2d | 100% → 75% | none → 1.5d |  | baseline start none → 2024-12-11; baseline finish none → 2024-12-12 |
| 12 | Incorporate feedback on software specifications |  | 2024-12-18 A → 2024-12-16 (-2d) | 3.5d → 2d | 100% → 75% | none → 1.5d |  | resources It Technitian [300%]; Network Admin [300%] → It Technitian; Network Admin; baseline start none → 2024-12-13; baseline finish none → 2024-12-16 |
| 13 | Obtain approvals to proceed |  | 2024-12-19 A → 2024-12-19 |  | 100% → 50% | none → 0.75d |  | baseline start none → 2024-12-17; baseline finish none → 2024-12-19 |
| 14 | Create risk management plan |  | 2024-12-25 A → 2024-12-25 |  | 100% → 75% | none → 0d |  | baseline start none → 2024-12-20; baseline finish none → 2024-12-20 |
| 15 | Develop change management plan |  | 2024-12-26 A → 2024-12-26 |  | 100% → 75% | none → 86.75d |  | baseline start none → 2024-12-23; baseline finish none → 2024-12-25 |
| 16 | **Purchasing** |  | 2025-02-06 A → 2025-01-17 (-20d) | 34.5d → 21d | 100% → 53% | none → 0d |  | baseline start none → 2024-12-20; baseline finish none → 2025-01-17 |
| 17 | Secure project sponsorship |  | 2024-12-27 A → 2024-12-27 |  | 100% → 25% | none → 0d |  | baseline start none → 2024-12-20; baseline finish none → 2024-12-23 |
| 18 | Secure core resources |  | 2025-01-15 A → 2025-01-02 (-13d) |  | 100% → 50% | none → 0d |  | baseline start none → 2024-12-24; baseline finish none → 2024-12-27 |
| 19 | Secure required resources |  | 2025-01-16 A → 2025-01-06 (-10d) | 3.5d → 3.75d | 100% → 60% | none → 0d |  | baseline start none → 2024-12-30; baseline finish none → 2025-01-01 |
| 20 | Obtain quotes from vendors |  | 2025-01-17 A → 2025-01-07 (-10d) |  | 100% → 75% | none → 1.25d |  | baseline start none → 2025-01-02; baseline finish none → 2025-01-06 |
| 21 | Evaluate vendors and select suppliers |  | 2025-01-28 A → 2025-01-10 (-18d) |  | 100% → 50% | none → 2.5d |  | baseline start none → 2025-01-07; baseline finish none → 2025-01-10 |
| 22 | Procure hardware |  | 2025-02-06 A → 2025-01-17 (-20d) |  | 100% → 50% | none → 0d |  | baseline start none → 2025-01-13; baseline finish none → 2025-01-17 |
| 23 | **Installation and Configuration** | 2025-02-11 A → 2025-01-20 (-22d) | 2025-07-08 A → 2025-03-06 (-124d) | 105.5d → 34d | 100% → 0% | none → 0d |  |  |
| 24 | Develop code | 2025-02-11 A → 2025-01-20 (-22d) | 2025-03-04 A → 2025-01-24 (-39d) |  | 100% → 0% | none → 0d |  |  |
| 25 | Install/deploy software | 2025-03-05 A → 2025-01-27 (-37d) | 2025-03-26 A → 2025-01-31 (-54d) |  | 100% → 0% | none → 36d |  |  |
| 26 | Configure required systems | 2025-03-27 A → 2025-02-03 (-52d) | 2025-04-15 A → 2025-02-06 (-68d) |  | 100% → 0% | none → 36d |  |  |
| 27 | Set up user accounts and permissions | 2025-04-16 A → 2025-02-07 (-68d) | 2025-04-29 A → 2025-02-11 (-77d) |  | 100% → 0% | none → 36d |  | resources Helpdesk [110%]; Network Admin → Helpdesk; Network Admin |
| 28 | Perform initial network configuration for thin clients | 2025-04-30 A → 2025-02-12 (-77d) | 2025-05-15 A → 2025-03-04 (-72d) |  | 100% → 0% | none → 36d |  |  |
| 29 | Document configuration settings | 2025-05-20 A → 2025-03-05 (-76d) | 2025-07-08 A → 2025-03-06 (-124d) | 4d → 2d | 100% → 0% | none → 36d |  |  |
| 30 | **Testing** | 2025-03-05 A → 2025-01-27 (-37d) | 2025-07-30 A → 2025-03-05 (-147d) | 105.5d → 28d | 100% → 0% | none → 0d |  |  |
| 31 | Develop unit test plans using product specifications | 2025-03-05 A → 2025-01-27 (-37d) | 2025-07-15 A → 2025-01-30 (-166d) | 9.5d → 4d | 100% → 0% | none → 0d | 27 → 24 |  |
| 32 | Unit Testing | 2025-03-25 A → 2025-01-31 (-53d) | 2025-04-15 A → 2025-02-06 (-68d) |  | 100% → 0% | none → 0d |  |  |
| 33 | Test component modules to product specifications | 2025-04-16 A → 2025-02-07 (-68d) | 2025-05-07 A → 2025-02-13 (-83d) |  | 100% → 0% | none → 0d |  |  |
| 34 | Integration Testing | 2025-05-08 A → 2025-02-14 (-83d) | 2025-06-10 A → 2025-02-20 (-110d) | 7d → 5d | 100% → 0% | none → 0d |  |  |
| 35 | Deliverable * Integration testing complete | 2025-06-11 A → 2025-02-21 (-110d) | 2025-06-18 A → 2025-02-24 (-114d) |  | 100% → 0% | none → 0d |  |  |
| 36 | Conduct performance testing on thin clients | 2025-06-19 A → 2025-02-25 (-114d) | 2025-07-16 A → 2025-02-28 (-138d) | 6d → 4d | 100% → 0% | none → 0d |  |  |
| 37 | Record and analyze test results | 2025-07-17 A → 2025-03-03 (-136d) | 2025-07-30 A → 2025-03-05 (-147d) |  | 100% → 0% | none → 0d |  |  |
| 38 | **Training** | 2025-07-17 A → 2024-10-31 (-259d) | 2025-08-13 → 2025-04-07 (-128d) | 19.5d → 113d | 20% → 0% | 0.5d → 0d |  |  |
| 47 | **Cybersecurity** | 2025-08-14 → 2024-11-20 (-267d) | 2025-10-22 → 2025-04-25 (-180d) | 49.5d → 113d |  |  |  |  |
| 48 | Identify modular/tiered design parameters | 2025-08-14 → 2025-04-08 (-128d) | 2025-08-27 → 2025-04-10 (-139d) |  |  |  |  |  |
| 49 | Review Help documentation | 2025-08-28 → 2025-04-11 (-139d) | 2025-09-16 → 2025-04-14 (-155d) | 4d → 2d |  |  |  |  |
| 50 | Develop software delivery mechanism | 2025-09-17 → 2025-04-15 (-155d) | 2025-10-08 → 2025-04-21 (-170d) |  |  |  |  |  |
| 51 | Implement access controls for thin client environment | 2025-10-09 → 2025-04-22 (-170d) | 2025-10-15 → 2025-04-25 (-173d) | 1.33d → 4d |  | 5.17d → 0d |  | resources It Technitian [300%]; Network Admin [300%] → It Technitian; Network Admin |
| 52 | Conduct security audit for thin client configuration | 2025-10-09 → 2024-11-20 (-323d) | 2025-10-22 → 2024-11-22 (-334d) |  |  | 0d → 110d | 49, 50 → none |  |
